# MealMate alfa

Schedule from MS Project, 2023-01-17 to 2023-05-26, costs in €.

## Calendars

- Standard: Mon-Fri 09:00-13:00, 14:00-18:00; Sat-Sun off.

## Resources

| Resource | Group | Rate |
| --- | --- | --- |
| D'Ambrosi Daniele | back-end | 25 |
| Concil Tania | front-end | 23 |
| Bianchi Matteo | front-end | 20 |
| Guerra Andrea | back-end | 20 |

## Schedule

| ID | WBS | Task | Type | Duration | Start | Finish | Predecessors | Total slack | Free slack | Resources | Work | Cost |
| --- | --- | --- | --- | --- | --- | --- | --- | --- | --- | --- | --- | --- |
| 1 | 1 | **Project management** |  | 11d | 2023-01-17 | 2023-01-31 |  | 0d |  |  | 176h | 4,224 |
| 2 | 1.1 | Project scope statement | manual | 5d | 2023-01-17 | 2023-01-23 |  |  |  | Concil Tania; D'Ambrosi Daniele | 80h | 1,920 |
| 3 | 1.2 | WBS | manual | 5d | 2023-01-24 | 2023-01-30 | 2 |  |  | Concil Tania; D'Ambrosi Daniele | 80h | 1,920 |
| 4 | 1.3 | Approved project management plan | manual | 1d | 2023-01-31 | 2023-01-31 | 3 |  |  | Concil Tania; D'Ambrosi Daniele | 16h | 384 |
| 5 | 2 | **Requirements** |  | 18d | 2023-02-01 | 2023-02-24 | 1 | -13d | 0d |  | 144h | 3,328 |
| 6 | 2.1 | Software architecture document | manual | 1d | 2023-02-01 | 2023-02-01 |  |  |  | D'Ambrosi Daniele | 8h | 200 |
| 7 | 2.2 | **UI Design** |  | 17d | 2023-02-02 | 2023-02-24 | 1 | -13d | 0d |  | 136h | 3,128 |
| 8 | 2.2.1 | Style definition |  | 7d | 2023-02-02 | 2023-02-10 | 6 | -13d | 0d | Concil Tania | 56h | 1,288 |
| 9 | 2.2.2 | Mobile app design |  | 10d | 2023-02-13 | 2023-02-24 | 8 | -13d | 0d | Concil Tania | 80h | 1,840 |
| 10 | 3 | **Infrastructure** |  | 12d | 2023-02-08 | 2023-02-23 | 5 | 0d |  |  | 96h | 1,920 |
| 11 | 3.1 | Infrastructure specification | manual | 5d | 2023-02-08 | 2023-02-14 | 6 |  |  | Guerra Andrea | 40h | 800 |
| 12 | 3.2 | Infrastructure cost prediction | manual | 7d | 2023-02-15 | 2023-02-23 | 11 |  |  | Guerra Andrea | 56h | 1,120 |
| 13 | 4 | **Back-end** |  | 56d | 2023-02-24 | 2023-05-12 | 10 | 0d |  |  | 896h | 20,160 |
| 14 | 4.1 | Media database | manual | 14d | 2023-02-24 | 2023-03-15 |  |  |  | D'Ambrosi Daniele; Guerra Andrea | 224h | 5,040 |
| 15 | 4.2 | Client-management system | manual | 14d | 2023-03-16 | 2023-04-04 | 14 |  |  | D'Ambrosi Daniele; Guerra Andrea | 224h | 5,040 |
| 16 | 4.3 | Authentication provider | manual | 14d | 2023-04-05 | 2023-04-24 | 15 |  |  | D'Ambrosi Daniele; Guerra Andrea | 224h | 5,040 |
| 17 | 4.4 | Application logic implementation | manual | 14d | 2023-04-25 | 2023-05-12 | 16 |  |  | D'Ambrosi Daniele; Guerra Andrea | 224h | 5,040 |
| 18 | 5 | **Front-end** |  | 45d | 2023-02-27 | 2023-04-28 | 5 | 0d |  |  | 720h | 15,480 |
| 19 | 5.1 | Home page | manual | 15d | 2023-02-27 | 2023-03-17 | 10 |  |  | Bianchi Matteo; Concil Tania | 240h | 5,160 |
| 20 | 5.2 | Login page | manual | 10d | 2023-03-20 | 2023-03-31 | 10, 19 |  |  | Bianchi Matteo; Concil Tania | 160h | 3,440 |
| 21 | 5.3 | Main page | manual | 20d | 2023-04-03 | 2023-04-28 | 10, 19, 20 |  |  | Bianchi Matteo; Concil Tania | 320h | 6,880 |
| 22 | 6 | **Test** |  | 8d | 2023-05-15 | 2023-05-24 |  | 0d |  |  | 64h | 1,600 |
| 23 | 6.1 | Test GUI | manual | 2d | 2023-05-15 | 2023-05-16 | 13, 18 |  |  | D'Ambrosi Daniele | 16h | 400 |
| 24 | 6.2 | Test App | manual | 6d | 2023-05-17 | 2023-05-24 | 23 |  |  | D'Ambrosi Daniele | 48h | 1,200 |

| ID | WBS | Task | Type | Duration | Start | Finish | Predecessors | Total slack | Resources | Work | Cost |
| --- | --- | --- | --- | --- | --- | --- | --- | --- | --- | --- | --- |
| 25 | 7 | **Deployment** |  | 2d | 2023-05-25 | 2023-05-26 |  | 0d |  | 16h | 400 |
| 26 | 7.1 | Consegna ai prof. | manual | 1d | 2023-05-25 | 2023-05-25 | 22 |  | D'Ambrosi Daniele | 8h | 200 |
| 27 | 7.2 | Pubblicazione su Appstore | manual | 1d | 2023-05-26 | 2023-05-26 | 26 |  | D'Ambrosi Daniele | 8h | 200 |
